ID,Activity,Trade,Group,Phase,Level,GridX0,GridX1,GridY0,GridY1,Start,Finish,Dur,Preds,Type,Role,Ref
C000,Concrete mobilize / layout / batch plant approvals,Concrete,GEN,General,FND,A,J,1,4,2027-01-04,2027-01-08,5,,task,,"S0.02 general notes: OSHA 1926.752 75% letter before erection, camber survey before pour, erector temp bracing per AISC 303 7.10"
C-FTG-R1-FR,"FTG R1: excavate, form & rebar footings Row 1 (grid 1), A-E",Concrete,FTG-R1,Foundations,FND,A,E,1,2,2027-01-11,2027-01-14,4,C000,task,,"S1.11 Sector 1 footings F132-F828, CF84-CF168; TOF 88'-6"" to 98'-0"""
C-FTG-R1-P,"FTG R1: pour footings Row 1 (grid 1), A-E",Concrete,FTG-R1,Foundations,FND,A,E,1,2,2027-01-15,2027-01-15,1,C-FTG-R1-FR,task,pour,"S1.11 Sector 1 footings F132-F828, CF84-CF168; TOF 88'-6"" to 98'-0"""
C-FTG-R2-FR,"FTG R2: excavate, form & rebar footings Rows 2 / 2.5 (grids 2-3), A-E",Concrete,FTG-R2,Foundations,FND,A,E,2,3,2027-01-15,2027-01-20,4,C-FTG-R1-P-1,task,,S1.11 Sector 1 footings; S3.11 foundation sections
C-FTG-R2-P,"FTG R2: pour footings Rows 2 / 2.5 (grids 2-3), A-E",Concrete,FTG-R2,Foundations,FND,A,E,2,3,2027-01-21,2027-01-21,1,C-FTG-R2-FR,task,pour,S1.11 Sector 1 footings; S3.11 foundation sections
C-FTG-R34-FR,"FTG R34: excavate, form & rebar footings Row 4 (grids 3-4), A-E",Concrete,FTG-R34,Foundations,FND,A,E,3,4,2027-01-21,2027-01-26,4,C-FTG-R2-P-1,task,,S1.11 Sector 1 footings; S3.11 foundation sections
C-FTG-R34-P,"FTG R34: pour footings Row 4 (grids 3-4), A-E",Concrete,FTG-R34,Foundations,FND,A,E,3,4,2027-01-27,2027-01-27,1,C-FTG-R34-FR,task,pour,S1.11 Sector 1 footings; S3.11 foundation sections
C-PIL1-FR,"PIL-1: form & rebar pilasters/stem walls, Sector 1 (A-E), set anchor bolts",Concrete,PIL-1,Foundations,FND,A,E,1,4,2027-01-29,2027-02-05,6,C-FTG-R1-P+1;C-FTG-R34-P+1,task,,"S1.11 / S2.03 pilasters 36x48, 30x26 TOC 98'-0""; base plates BP1/BP4; anchor rods F1554 Gr36"
C-PIL1-P,"PIL-1: pour pilasters & stem walls, Sector 1",Concrete,PIL-1,Foundations,FND,A,E,1,4,2027-02-08,2027-02-09,2,C-PIL1-FR,task,pour,"S1.11 / S2.03 pilasters 36x48, 30x26 TOC 98'-0""; base plates BP1/BP4; anchor rods F1554 Gr36"
C-PIL1-AB,PIL-1: as-built anchor bolt survey to erector,Concrete,PIL-1,Foundations,FND,A,E,1,4,2027-02-11,2027-02-11,1,C-PIL1-P+1,task,,"S1.11 / S2.03 pilasters 36x48, 30x26 TOC 98'-0""; base plates BP1/BP4; anchor rods F1554 Gr36"
C-REL-S1,"MILESTONE: Sector 1 foundations released to steel (75% f'c, OSHA 1926.752)",Concrete,PIL-1,Foundations,FND,A,E,1,4,2027-02-17,2027-02-17,0,C-PIL1-P+5;C-PIL1-AB,milestone,release,"S1.11 / S2.03 pilasters 36x48, 30x26 TOC 98'-0""; base plates BP1/BP4; anchor rods F1554 Gr36"
C-FTG-B1-FR,FTG B1: form & rebar basement footings E-G,Concrete,FTG-B1,Foundations,FND,E,G,1,4,2027-01-22,2027-01-27,4,C-FTG-R2-P,task,,"S1.02 basement footings F186-F240, TOF 82'-0""; wall footings CF120"
C-FTG-B1-P,FTG B1: pour basement footings E-G,Concrete,FTG-B1,Foundations,FND,E,G,1,4,2027-01-28,2027-01-28,1,C-FTG-B1-FR,task,pour,"S1.02 basement footings F186-F240, TOF 82'-0""; wall footings CF120"
C-FTG-B2-FR,FTG B2: form & rebar basement footings G-J,Concrete,FTG-B2,Foundations,FND,G,J,1,4,2027-01-27,2027-02-01,4,C-FTG-B1-FR-1,task,,S1.02 basement footings; S3.12 transverse footing keys
C-FTG-B2-P,FTG B2: pour basement footings G-J,Concrete,FTG-B2,Foundations,FND,G,J,1,4,2027-02-02,2027-02-02,1,C-FTG-B2-FR,task,pour,S1.02 basement footings; S3.12 transverse footing keys
C-WALL-N-FR,WALL N: form & rebar basement north wall grid 1 (w/ pilasters),Concrete,WALL-N,Foundations,B1,E,J,1,1,2027-02-03,2027-02-09,5,C-FTG-B2-P,task,,S1.02 WC16 basement wall grid 1; S3.11 basement wall sections; S2.03 pilaster elev grid 1
C-WALL-N-P,WALL N: pour basement north wall grid 1,Concrete,WALL-N,Foundations,B1,E,J,1,1,2027-02-10,2027-02-10,1,C-WALL-N-FR,task,pour,S1.02 WC16 basement wall grid 1; S3.11 basement wall sections; S2.03 pilaster elev grid 1
C-WALL-N-ST,"WALL N: strip, cure, waterproof north wall grid 1",Concrete,WALL-N,Foundations,B1,E,J,1,1,2027-02-12,2027-02-16,3,C-WALL-N-P+1,task,,S1.02 WC16 basement wall grid 1; S3.11 basement wall sections; S2.03 pilaster elev grid 1
C-WALL-S-FR,WALL S: form & rebar basement south wall grid 4 (w/ pilasters),Concrete,WALL-S,Foundations,B1,E,J,4,4,2027-02-10,2027-02-16,5,C-WALL-N-FR,task,,S1.02 WC16 basement wall grid 4; S2.03 pilaster elev grid 4
C-WALL-S-P,WALL S: pour basement south wall grid 4,Concrete,WALL-S,Foundations,B1,E,J,4,4,2027-02-17,2027-02-17,1,C-WALL-S-FR,task,pour,S1.02 WC16 basement wall grid 4; S2.03 pilaster elev grid 4
C-WALL-S-ST,"WALL S: strip, cure, waterproof south wall grid 4",Concrete,WALL-S,Foundations,B1,E,J,4,4,2027-02-19,2027-02-23,3,C-WALL-S-P+1,task,,S1.02 WC16 basement wall grid 4; S2.03 pilaster elev grid 4
C-WALL-W-FR,WALL W: form & rebar basement west wall grid E (w/ pilasters),Concrete,WALL-W,Foundations,B1,E,E,1,4,2027-02-17,2027-02-23,5,C-WALL-S-FR,task,,S1.02 WC16 wall grid E (match line); pilasters 36x50 / 48x50
C-WALL-W-P,WALL W: pour basement west wall grid E,Concrete,WALL-W,Foundations,B1,E,E,1,4,2027-02-24,2027-02-24,1,C-WALL-W-FR,task,pour,S1.02 WC16 wall grid E (match line); pilasters 36x50 / 48x50
C-WALL-W-ST,"WALL W: strip, cure, waterproof west wall grid E",Concrete,WALL-W,Foundations,B1,E,E,1,4,2027-02-26,2027-03-02,3,C-WALL-W-P+1,task,,S1.02 WC16 wall grid E (match line); pilasters 36x50 / 48x50
C-WALL-E-FR,WALL E: form & rebar basement east wall grid J (w/ pilasters),Concrete,WALL-E,Foundations,B1,J,J,1,4,2027-02-24,2027-03-02,5,C-WALL-W-FR,task,,S1.02 WC16 wall grid J; S2.03 pilaster elev grid H/J
C-WALL-E-P,WALL E: pour basement east wall grid J,Concrete,WALL-E,Foundations,B1,J,J,1,4,2027-03-03,2027-03-03,1,C-WALL-E-FR,task,pour,S1.02 WC16 wall grid J; S2.03 pilaster elev grid H/J
C-WALL-E-ST,"WALL E: strip, cure, waterproof east wall grid J",Concrete,WALL-E,Foundations,B1,J,J,1,4,2027-03-05,2027-03-09,3,C-WALL-E-P+1,task,,S1.02 WC16 wall grid J; S2.03 pilaster elev grid H/J
C-PILB-FR,"PIL-B: form & rebar interior basement pilasters/columns E-J, set anchor bolts",Concrete,PIL-B,Foundations,B1,E,J,1,4,2027-02-05,2027-02-11,5,C-FTG-B2-P+2,task,,S5.11 pilaster details 28-36 #7 vert; S3.12 MF column on beam detail; W24x192 BELOW
C-PILB-P,PIL-B: pour interior basement pilasters/columns,Concrete,PIL-B,Foundations,B1,E,J,1,4,2027-02-12,2027-02-12,1,C-PILB-FR,task,pour,S5.11 pilaster details 28-36 #7 vert; S3.12 MF column on beam detail; W24x192 BELOW
C-PILB-AB,PIL-B: as-built anchor bolt survey to erector,Concrete,PIL-B,Foundations,B1,E,J,1,4,2027-02-16,2027-02-16,1,C-PILB-P+1,task,,S5.11 pilaster details 28-36 #7 vert; S3.12 MF column on beam detail; W24x192 BELOW
C-REL-S2,MILESTONE: Sector 2 basement released to steel (walls+pilasters 75% f'c),Concrete,PIL-B,Foundations,B1,E,J,1,4,2027-03-11,2027-03-11,0,C-PILB-P+5;C-WALL-E-P+5;C-PILB-AB,milestone,release,S5.11 pilaster details 28-36 #7 vert; S3.12 MF column on beam detail; W24x192 BELOW
C-SOG-B1-PR,"SOG B1: french drain, subbase, VB, mesh - basement slab E-J",Concrete,SOG-B1,Slabs on grade,B1,E,J,1,4,2027-03-10,2027-03-15,4,C-WALL-E-ST,task,,"S1.02 basement SOG, under-slab french drain per geotech sec 12"
C-SOG-B1-P,SOG B1: pour basement slab E-J,Concrete,SOG-B1,Slabs on grade,B1,E,J,1,4,2027-03-16,2027-03-16,1,C-SOG-B1-PR,task,pour,"S1.02 basement SOG, under-slab french drain per geotech sec 12"
C-SOG-1W-PR,"SOG 1W: subbase, vapor barrier, mesh, thickened slabs A-C",Concrete,SOG-1W,Slabs on grade,L1,A,C,1,4,2027-04-15,2027-04-19,3,S-Z1T1-REL-L2,task,,"S1.11 Sector 1 SOG type S5, FF 100'-0""; control joints 10' max"
C-SOG-1W-P,SOG 1W: pour slab on grade A-C,Concrete,SOG-1W,Slabs on grade,L1,A,C,1,4,2027-04-20,2027-04-20,1,C-SOG-1W-PR,task,pour,"S1.11 Sector 1 SOG type S5, FF 100'-0""; control joints 10' max"
C-SOG-1E-PR,"SOG 1E: subbase, vapor barrier, mesh, thickened slabs C-E",Concrete,SOG-1E,Slabs on grade,L1,C,E,1,4,2027-04-26,2027-04-28,3,S-Z2T1-REL-L2,task,,S1.11 Sector 1 SOG type S5; thickened slab at interior columns
C-SOG-1E-P,SOG 1E: pour slab on grade C-E,Concrete,SOG-1E,Slabs on grade,L1,C,E,1,4,2027-04-29,2027-04-29,1,C-SOG-1E-PR,task,pour,S1.11 Sector 1 SOG type S5; thickened slab at interior columns
C-L1-P1-PR,"L1 P1: pour stops, closures, WWF & chord bars, embeds, camber survey E-H",Concrete,L1-P1,Elevated decks,L1,E,H,1,4,2027-03-24,2027-03-29,4,S-Z3T0-REL-L1,task,,"S1.12 / S1.13 L1 deck over basement, chord bars 6-9 #7, 3-#7 at openings; deck brg 99'-4 1/2"""
C-L1-P1-INS,L1 P1: pre-pour inspection (SI + EOR camber review),Concrete,L1-P1,Elevated decks,L1,E,H,1,4,2027-03-30,2027-03-30,1,C-L1-P1-PR,task,,"S1.12 / S1.13 L1 deck over basement, chord bars 6-9 #7, 3-#7 at openings; deck brg 99'-4 1/2"""
C-L1-P1-P,L1 P1: place & finish composite deck slab E-H,Concrete,L1-P1,Elevated decks,L1,E,H,1,4,2027-03-31,2027-03-31,1,C-L1-P1-INS,task,pour,"S1.12 / S1.13 L1 deck over basement, chord bars 6-9 #7, 3-#7 at openings; deck brg 99'-4 1/2"""
C-L1-P1-CUR,L1 P1: cure / saw cut / slab released for follow-on trades,Concrete,L1-P1,Elevated decks,L1,E,H,1,4,2027-04-01,2027-04-05,3,C-L1-P1-P,task,slab_release,"S1.12 / S1.13 L1 deck over basement, chord bars 6-9 #7, 3-#7 at openings; deck brg 99'-4 1/2"""
C-L1-P2-PR,"L1 P2: pour stops, closures, WWF & chord bars, embeds, camber survey H-J",Concrete,L1-P2,Elevated decks,L1,H,J,1,4,2027-03-30,2027-04-02,4,S-Z4T0-REL-L1;C-L1-P1-PR,task,,"S1.12 / S1.13 L1 deck over basement, east end; deck brg 99'-4 1/2"""
C-L1-P2-INS,L1 P2: pre-pour inspection (SI + EOR camber review),Concrete,L1-P2,Elevated decks,L1,H,J,1,4,2027-04-05,2027-04-05,1,C-L1-P2-PR,task,,"S1.12 / S1.13 L1 deck over basement, east end; deck brg 99'-4 1/2"""
C-L1-P2-P,L1 P2: place & finish composite deck slab H-J,Concrete,L1-P2,Elevated decks,L1,H,J,1,4,2027-04-06,2027-04-06,1,C-L1-P2-INS,task,pour,"S1.12 / S1.13 L1 deck over basement, east end; deck brg 99'-4 1/2"""
C-L1-P2-CUR,L1 P2: cure / saw cut / slab released for follow-on trades,Concrete,L1-P2,Elevated decks,L1,H,J,1,4,2027-04-07,2027-04-09,3,C-L1-P2-P,task,slab_release,"S1.12 / S1.13 L1 deck over basement, east end; deck brg 99'-4 1/2"""
C-L2-P1-PR,"L2 P1: pour stops, closures, WWF & chord bars, embeds, camber survey A-D",Concrete,L2-P1,Elevated decks,L2,A,D,1,4,2027-04-15,2027-04-20,4,S-Z1T1-REL-L2;C-L1-P2-PR,task,,"S1.21 L2 Sector 1, D6R deck, deck brg 117'-6"", FF 118'-0""; camber survey on W33x291 before pour"
C-L2-P1-INS,L2 P1: pre-pour inspection (SI + EOR camber review),Concrete,L2-P1,Elevated decks,L2,A,D,1,4,2027-04-21,2027-04-21,1,C-L2-P1-PR,task,,"S1.21 L2 Sector 1, D6R deck, deck brg 117'-6"", FF 118'-0""; camber survey on W33x291 before pour"
C-L2-P1-P,L2 P1: place & finish composite deck slab A-D,Concrete,L2-P1,Elevated decks,L2,A,D,1,4,2027-04-22,2027-04-22,1,C-L2-P1-INS,task,pour,"S1.21 L2 Sector 1, D6R deck, deck brg 117'-6"", FF 118'-0""; camber survey on W33x291 before pour"
C-L2-P1-CUR,L2 P1: cure / saw cut / slab released for follow-on trades,Concrete,L2-P1,Elevated decks,L2,A,D,1,4,2027-04-23,2027-04-27,3,C-L2-P1-P,task,slab_release,"S1.21 L2 Sector 1, D6R deck, deck brg 117'-6"", FF 118'-0""; camber survey on W33x291 before pour"
C-L2-P2-PR,"L2 P2: pour stops, closures, WWF & chord bars, embeds, camber survey D-G",Concrete,L2-P2,Elevated decks,L2,D,G,1,4,2027-04-26,2027-04-29,4,S-Z2T1-REL-L2;C-L2-P1-PR,task,,"S1.21 / S1.22 L2 across match line D-G; D6R deck brg 117'-6"""
C-L2-P2-INS,L2 P2: pre-pour inspection (SI + EOR camber review),Concrete,L2-P2,Elevated decks,L2,D,G,1,4,2027-04-30,2027-04-30,1,C-L2-P2-PR,task,,"S1.21 / S1.22 L2 across match line D-G; D6R deck brg 117'-6"""
C-L2-P2-P,L2 P2: place & finish composite deck slab D-G,Concrete,L2-P2,Elevated decks,L2,D,G,1,4,2027-05-03,2027-05-03,1,C-L2-P2-INS,task,pour,"S1.21 / S1.22 L2 across match line D-G; D6R deck brg 117'-6"""
C-L2-P2-CUR,L2 P2: cure / saw cut / slab released for follow-on trades,Concrete,L2-P2,Elevated decks,L2,D,G,1,4,2027-05-04,2027-05-06,3,C-L2-P2-P,task,slab_release,"S1.21 / S1.22 L2 across match line D-G; D6R deck brg 117'-6"""
C-L2-P3-PR,"L2 P3: pour stops, closures, WWF & chord bars, embeds, camber survey G-J",Concrete,L2-P3,Elevated decks,L2,G,J,1,4,2027-05-18,2027-05-21,4,S-Z4T1-REL-L2;C-L2-P2-PR,task,,"S1.22 L2 Sector 2; D6R deck brg 117'-6""; W33x118 (80) CAM 3/4"" review"
C-L2-P3-INS,L2 P3: pre-pour inspection (SI + EOR camber review),Concrete,L2-P3,Elevated decks,L2,G,J,1,4,2027-05-24,2027-05-24,1,C-L2-P3-PR,task,,"S1.22 L2 Sector 2; D6R deck brg 117'-6""; W33x118 (80) CAM 3/4"" review"
C-L2-P3-P,L2 P3: place & finish composite deck slab G-J,Concrete,L2-P3,Elevated decks,L2,G,J,1,4,2027-05-25,2027-05-25,1,C-L2-P3-INS,task,pour,"S1.22 L2 Sector 2; D6R deck brg 117'-6""; W33x118 (80) CAM 3/4"" review"
C-L2-P3-CUR,L2 P3: cure / saw cut / slab released for follow-on trades,Concrete,L2-P3,Elevated decks,L2,G,J,1,4,2027-05-26,2027-05-28,3,C-L2-P3-P,task,slab_release,"S1.22 L2 Sector 2; D6R deck brg 117'-6""; W33x118 (80) CAM 3/4"" review"
C-L3-P1-PR,"L3 P1: pour stops, closures, WWF & chord bars, embeds, camber survey A-D",Concrete,L3-P1,Elevated decks,L3,A,D,1,4,2027-05-28,2027-06-02,4,S-Z1T2-REL-L3;C-L2-P3-PR,task,,"S1.31 L3 Sector 1, D6R deck brg 133'-6"", FF 134'-0"""
C-L3-P1-INS,L3 P1: pre-pour inspection (SI + EOR camber review),Concrete,L3-P1,Elevated decks,L3,A,D,1,4,2027-06-03,2027-06-03,1,C-L3-P1-PR,task,,"S1.31 L3 Sector 1, D6R deck brg 133'-6"", FF 134'-0"""
C-L3-P1-P,L3 P1: place & finish composite deck slab A-D,Concrete,L3-P1,Elevated decks,L3,A,D,1,4,2027-06-04,2027-06-04,1,C-L3-P1-INS,task,pour,"S1.31 L3 Sector 1, D6R deck brg 133'-6"", FF 134'-0"""
C-L3-P1-CUR,L3 P1: cure / saw cut / slab released for follow-on trades,Concrete,L3-P1,Elevated decks,L3,A,D,1,4,2027-06-07,2027-06-09,3,C-L3-P1-P,task,slab_release,"S1.31 L3 Sector 1, D6R deck brg 133'-6"", FF 134'-0"""
C-L3-P2-PR,"L3 P2: pour stops, closures, WWF & chord bars, embeds, camber survey D-G",Concrete,L3-P2,Elevated decks,L3,D,G,1,4,2027-06-09,2027-06-14,4,S-Z2T2-REL-L3;C-L3-P1-PR,task,,"S1.31 / S1.32 L3 across match line; W33x291 (110) CAM 3/4"" camber review"
C-L3-P2-INS,L3 P2: pre-pour inspection (SI + EOR camber review),Concrete,L3-P2,Elevated decks,L3,D,G,1,4,2027-06-15,2027-06-15,1,C-L3-P2-PR,task,,"S1.31 / S1.32 L3 across match line; W33x291 (110) CAM 3/4"" camber review"
C-L3-P2-P,L3 P2: place & finish composite deck slab D-G,Concrete,L3-P2,Elevated decks,L3,D,G,1,4,2027-06-16,2027-06-16,1,C-L3-P2-INS,task,pour,"S1.31 / S1.32 L3 across match line; W33x291 (110) CAM 3/4"" camber review"
C-L3-P2-CUR,L3 P2: cure / saw cut / slab released for follow-on trades,Concrete,L3-P2,Elevated decks,L3,D,G,1,4,2027-06-17,2027-06-21,3,C-L3-P2-P,task,slab_release,"S1.31 / S1.32 L3 across match line; W33x291 (110) CAM 3/4"" camber review"
C-L3-P3-PR,"L3 P3: pour stops, closures, WWF & chord bars, embeds, camber survey G-J",Concrete,L3-P3,Elevated decks,L3,G,J,1,4,2027-07-05,2027-07-08,4,S-Z4T2-REL-L3;C-L3-P2-PR,task,,"S1.32 L3 Sector 2; deck brg 133'-6"""
C-L3-P3-INS,L3 P3: pre-pour inspection (SI + EOR camber review),Concrete,L3-P3,Elevated decks,L3,G,J,1,4,2027-07-09,2027-07-09,1,C-L3-P3-PR,task,,"S1.32 L3 Sector 2; deck brg 133'-6"""
C-L3-P3-P,L3 P3: place & finish composite deck slab G-J,Concrete,L3-P3,Elevated decks,L3,G,J,1,4,2027-07-12,2027-07-12,1,C-L3-P3-INS,task,pour,"S1.32 L3 Sector 2; deck brg 133'-6"""
C-L3-P3-CUR,L3 P3: cure / saw cut / slab released for follow-on trades,Concrete,L3-P3,Elevated decks,L3,G,J,1,4,2027-07-13,2027-07-15,3,C-L3-P3-P,task,slab_release,"S1.32 L3 Sector 2; deck brg 133'-6"""
C-RF-P1-PR,"RF P1: pour stops, closures, WWF & chord bars, embeds, camber survey A-D",Concrete,RF-P1,Elevated decks,RF,A,D,1,4,2027-07-09,2027-07-14,4,S-Z1T2-REL-RF;C-L3-P3-PR,task,,"S1.41 roof Sector 1, deck brg 150'-1 1/2"" to 152'-0""; W27x84 (80) CAM 1"""
C-RF-P1-INS,RF P1: pre-pour inspection (SI + EOR camber review),Concrete,RF-P1,Elevated decks,RF,A,D,1,4,2027-07-15,2027-07-15,1,C-RF-P1-PR,task,,"S1.41 roof Sector 1, deck brg 150'-1 1/2"" to 152'-0""; W27x84 (80) CAM 1"""
C-RF-P1-P,RF P1: place & finish composite deck slab A-D,Concrete,RF-P1,Elevated decks,RF,A,D,1,4,2027-07-16,2027-07-16,1,C-RF-P1-INS,task,pour,"S1.41 roof Sector 1, deck brg 150'-1 1/2"" to 152'-0""; W27x84 (80) CAM 1"""
C-RF-P1-CUR,RF P1: cure / saw cut / slab released for follow-on trades,Concrete,RF-P1,Elevated decks,RF,A,D,1,4,2027-07-19,2027-07-21,3,C-RF-P1-P,task,slab_release,"S1.41 roof Sector 1, deck brg 150'-1 1/2"" to 152'-0""; W27x84 (80) CAM 1"""
C-RF-P2-PR,"RF P2: pour stops, closures, WWF & chord bars, embeds, camber survey D-G",Concrete,RF-P2,Elevated decks,RF,D,G,1,4,2027-07-15,2027-07-20,4,S-Z2T2-REL-RF;C-RF-P1-PR,task,,"S1.41 / S1.42 roof across match line; W33x118 (110) CAM 2"""
C-RF-P2-INS,RF P2: pre-pour inspection (SI + EOR camber review),Concrete,RF-P2,Elevated decks,RF,D,G,1,4,2027-07-21,2027-07-21,1,C-RF-P2-PR,task,,"S1.41 / S1.42 roof across match line; W33x118 (110) CAM 2"""
C-RF-P2-P,RF P2: place & finish composite deck slab D-G,Concrete,RF-P2,Elevated decks,RF,D,G,1,4,2027-07-22,2027-07-22,1,C-RF-P2-INS,task,pour,"S1.41 / S1.42 roof across match line; W33x118 (110) CAM 2"""
C-RF-P2-CUR,RF P2: cure / saw cut / slab released for follow-on trades,Concrete,RF-P2,Elevated decks,RF,D,G,1,4,2027-07-23,2027-07-27,3,C-RF-P2-P,task,slab_release,"S1.41 / S1.42 roof across match line; W33x118 (110) CAM 2"""
C-RF-P3-PR,"RF P3: pour stops, closures, WWF & chord bars, embeds, camber survey G-J",Concrete,RF-P3,Elevated decks,RF,G,J,1,4,2027-07-21,2027-07-26,4,S-Z4T2-REL-RF;C-RF-P2-PR,task,,"S1.42 roof Sector 2; W30x116 CAM 3/4"""
C-RF-P3-INS,RF P3: pre-pour inspection (SI + EOR camber review),Concrete,RF-P3,Elevated decks,RF,G,J,1,4,2027-07-27,2027-07-27,1,C-RF-P3-PR,task,,"S1.42 roof Sector 2; W30x116 CAM 3/4"""
C-RF-P3-P,RF P3: place & finish composite deck slab G-J,Concrete,RF-P3,Elevated decks,RF,G,J,1,4,2027-07-28,2027-07-28,1,C-RF-P3-INS,task,pour,"S1.42 roof Sector 2; W30x116 CAM 3/4"""
C-RF-P3-CUR,RF P3: cure / saw cut / slab released for follow-on trades,Concrete,RF-P3,Elevated decks,RF,G,J,1,4,2027-07-29,2027-08-02,3,C-RF-P3-P,task,slab_release,"S1.42 roof Sector 2; W30x116 CAM 3/4"""
