ID,Activity,Trade,Group,Phase,Level,GridX0,GridX1,GridY0,GridY1,Start,Finish,Dur,Preds,Type,Role,Ref
S000,"Steel mobilize, crane pad & mat approval, erection plan sign-off",Steel,GEN,General,L1,A,J,1,4,2027-01-04,2027-01-08,5,,task,,"S0.02 general notes: OSHA 1926.752 75% letter before erection, camber survey before pour, erector temp bracing per AISC 303 7.10"
S001,"Assemble 275t crawler (Sector 2 side), shakeout yard set",Steel,GEN,General,L1,E,J,1,4,2027-01-11,2027-01-13,3,S000,task,,"S0.02 general notes: OSHA 1926.752 75% letter before erection, camber survey before pour, erector temp bracing per AISC 303 7.10"
S002,Verify anchor bolt as-builts vs erection drawings - Sector 2 basement,Steel,GEN,General,B1,E,J,1,4,2027-02-17,2027-02-18,2,C-PILB-AB;S001,task,,"S0.02 general notes: OSHA 1926.752 75% letter before erection, camber survey before pour, erector temp bracing per AISC 303 7.10"
S003,Verify anchor bolt as-builts vs erection drawings - Sector 1,Steel,GEN,General,FND,A,E,1,4,2027-02-12,2027-02-15,2,C-PIL1-AB,task,,"S0.02 general notes: OSHA 1926.752 75% letter before erection, camber survey before pour, erector temp bracing per AISC 303 7.10"
S-Z3T0-SHK,SEQ-01 Basement lid E-G: shakeout & pre-assemble (E-G),Steel,Z3T0,Erection,L1,E,G,1,4,2027-03-11,2027-03-12,2,C-REL-S2;S002,task,shakeout,"S1.10 / S1.12 basement lid E-G: W24x55 (30) & W18x35 (30) infill, W30x173 (70/96) collectors, W33x130/152 (80) CAM 3/4""; S2.01 basement MF W36x160 on W24x162/192 cols; HSS12x4x1/4"
S-Z3T0-RAISE,"SEQ-01 Basement lid E-G: erect columns, girders, beams & temp bracing (E-G)",Steel,Z3T0,Erection,L1,E,G,1,4,2027-03-11,2027-03-17,5,C-REL-S2;S002,task,raise,"S1.10 / S1.12 basement lid E-G: W24x55 (30) & W18x35 (30) infill, W30x173 (70/96) collectors, W33x130/152 (80) CAM 3/4""; S2.01 basement MF W36x160 on W24x162/192 cols; HSS12x4x1/4"
S-Z3T0-PLUMB,"SEQ-01 Basement lid E-G: plumb, bolt-up & final torque (E-G)",Steel,Z3T0,Erection,L1,E,G,1,4,2027-03-16,2027-03-18,3,S-Z3T0-RAISE-2,task,,"S1.10 / S1.12 basement lid E-G: W24x55 (30) & W18x35 (30) infill, W30x173 (70/96) collectors, W33x130/152 (80) CAM 3/4""; S2.01 basement MF W36x160 on W24x162/192 cols; HSS12x4x1/4"
S-Z3T0-WELD,SEQ-01 Basement lid E-G: SidePlate moment connection weld-out & UT (E-G),Steel,Z3T0,Detailing,L1,E,G,1,4,2027-03-18,2027-03-23,4,S-Z3T0-PLUMB-1,task,,"S1.10 / S1.12 basement lid E-G: W24x55 (30) & W18x35 (30) infill, W30x173 (70/96) collectors, W33x130/152 (80) CAM 3/4""; S2.01 basement MF W36x160 on W24x162/192 cols; HSS12x4x1/4"
S-Z3T0-DECK-L1,"SEQ-01 Basement lid E-G: metal deck, pour stops, deck weld & shear studs @ L1 (E-G)",Steel,Z3T0,Decking,L1,E,G,1,4,2027-03-19,2027-03-23,3,S-Z3T0-PLUMB,task,deck,"S1.10 / S1.12 basement lid E-G: W24x55 (30) & W18x35 (30) infill, W30x173 (70/96) collectors, W33x130/152 (80) CAM 3/4""; S2.01 basement MF W36x160 on W24x162/192 cols; HSS12x4x1/4"
S-Z3T0-REL-L1,MILESTONE: SEQ-01 Basement lid E-G deck released to concrete @ L1 (E-G),Steel,Z3T0,Decking,L1,E,G,1,4,2027-03-24,2027-03-24,0,S-Z3T0-DECK-L1;S-Z3T0-WELD,milestone,release,"S1.10 / S1.12 basement lid E-G: W24x55 (30) & W18x35 (30) infill, W30x173 (70/96) collectors, W33x130/152 (80) CAM 3/4""; S2.01 basement MF W36x160 on W24x162/192 cols; HSS12x4x1/4"
S-Z4T0-SHK,SEQ-02 Basement lid G-J: shakeout & pre-assemble (G-J),Steel,Z4T0,Erection,L1,G,J,1,4,2027-03-16,2027-03-17,2,S-Z3T0-RAISE-2,task,shakeout,"S1.12 basement lid G-J: W24x55 (30) infill, W27x84 (30), W30x173 collectors; S3.12 beam-to-wall embed plates; stairs S4.01"
S-Z4T0-RAISE,"SEQ-02 Basement lid G-J: erect columns, girders, beams & temp bracing (G-J)",Steel,Z4T0,Erection,L1,G,J,1,4,2027-03-18,2027-03-23,4,S-Z3T0-RAISE,task,raise,"S1.12 basement lid G-J: W24x55 (30) infill, W27x84 (30), W30x173 collectors; S3.12 beam-to-wall embed plates; stairs S4.01"
S-Z4T0-PLUMB,"SEQ-02 Basement lid G-J: plumb, bolt-up & final torque (G-J)",Steel,Z4T0,Erection,L1,G,J,1,4,2027-03-22,2027-03-24,3,S-Z4T0-RAISE-2,task,,"S1.12 basement lid G-J: W24x55 (30) infill, W27x84 (30), W30x173 collectors; S3.12 beam-to-wall embed plates; stairs S4.01"
S-Z4T0-WELD,SEQ-02 Basement lid G-J: SidePlate moment connection weld-out & UT (G-J),Steel,Z4T0,Detailing,L1,G,J,1,4,2027-03-24,2027-03-29,4,S-Z4T0-PLUMB-1,task,,"S1.12 basement lid G-J: W24x55 (30) infill, W27x84 (30), W30x173 collectors; S3.12 beam-to-wall embed plates; stairs S4.01"
S-Z4T0-DECK-L1,"SEQ-02 Basement lid G-J: metal deck, pour stops, deck weld & shear studs @ L1 (G-J)",Steel,Z4T0,Decking,L1,G,J,1,4,2027-03-25,2027-03-26,2,S-Z4T0-PLUMB,task,deck,"S1.12 basement lid G-J: W24x55 (30) infill, W27x84 (30), W30x173 collectors; S3.12 beam-to-wall embed plates; stairs S4.01"
S-Z4T0-REL-L1,MILESTONE: SEQ-02 Basement lid G-J deck released to concrete @ L1 (G-J),Steel,Z4T0,Decking,L1,G,J,1,4,2027-03-30,2027-03-30,0,S-Z4T0-DECK-L1;S-Z4T0-WELD,milestone,release,"S1.12 basement lid G-J: W24x55 (30) infill, W27x84 (30), W30x173 collectors; S3.12 beam-to-wall embed plates; stairs S4.01"
S010,"Walk crane to Sector 1 west end, re-rig",Steel,GEN,General,L1,A,E,1,4,2027-03-24,2027-03-25,2,S-Z4T0-RAISE,task,,"S0.02 general notes: OSHA 1926.752 75% letter before erection, camber survey before pour, erector temp bracing per AISC 303 7.10"
S-Z1T1-SHK,SEQ-03 Tier 1 A-C: shakeout & pre-assemble (A-C),Steel,Z1T1,Erection,L1,A,C,1,4,2027-03-26,2027-03-29,2,S010;C-REL-S1;S003,task,shakeout,"S1.21 L2 A-C: W24x162/192 lower-tier cols (S2.01), W36x160 (30) MF beams grids 1 & 4, W33x141 MF at A.5-C, W18x35 (30) infill, W24x55; D6R deck"
S-Z1T1-RAISE,"SEQ-03 Tier 1 A-C: erect columns, girders, beams & temp bracing (A-C)",Steel,Z1T1,Erection,L2,A,C,1,4,2027-03-26,2027-04-05,7,S010;C-REL-S1;S003,task,raise,"S1.21 L2 A-C: W24x162/192 lower-tier cols (S2.01), W36x160 (30) MF beams grids 1 & 4, W33x141 MF at A.5-C, W18x35 (30) infill, W24x55; D6R deck"
S-Z1T1-PLUMB,"SEQ-03 Tier 1 A-C: plumb, bolt-up & final torque (A-C)",Steel,Z1T1,Erection,L2,A,C,1,4,2027-04-02,2027-04-07,4,S-Z1T1-RAISE-2,task,,"S1.21 L2 A-C: W24x162/192 lower-tier cols (S2.01), W36x160 (30) MF beams grids 1 & 4, W33x141 MF at A.5-C, W18x35 (30) infill, W24x55; D6R deck"
S-Z1T1-WELD,SEQ-03 Tier 1 A-C: SidePlate moment connection weld-out & UT (A-C),Steel,Z1T1,Detailing,L2,A,C,1,4,2027-04-07,2027-04-14,6,S-Z1T1-PLUMB-1,task,,"S1.21 L2 A-C: W24x162/192 lower-tier cols (S2.01), W36x160 (30) MF beams grids 1 & 4, W33x141 MF at A.5-C, W18x35 (30) infill, W24x55; D6R deck"
S-Z1T1-DECK-L2,"SEQ-03 Tier 1 A-C: metal deck, pour stops, deck weld & shear studs @ L2 (A-C)",Steel,Z1T1,Decking,L2,A,C,1,4,2027-04-08,2027-04-12,3,S-Z1T1-PLUMB,task,deck,"S1.21 L2 A-C: W24x162/192 lower-tier cols (S2.01), W36x160 (30) MF beams grids 1 & 4, W33x141 MF at A.5-C, W18x35 (30) infill, W24x55; D6R deck"
S-Z1T1-REL-L2,MILESTONE: SEQ-03 Tier 1 A-C deck released to concrete @ L2 (A-C),Steel,Z1T1,Decking,L2,A,C,1,4,2027-04-15,2027-04-15,0,S-Z1T1-DECK-L2;S-Z1T1-WELD,milestone,release,"S1.21 L2 A-C: W24x162/192 lower-tier cols (S2.01), W36x160 (30) MF beams grids 1 & 4, W33x141 MF at A.5-C, W18x35 (30) infill, W24x55; D6R deck"
S-Z2T1-SHK,SEQ-04 Tier 1 C-E: shakeout & pre-assemble (C-E),Steel,Z2T1,Erection,L1,C,E,1,4,2027-04-02,2027-04-05,2,S-Z1T1-RAISE-2,task,shakeout,"S1.21 L2 C-E: W24x192 cols, W36x160 (30) MF beams, W33x291 (110) CAM 3/4"" girder, HSS12x4x1/4 at ramp; D6R deck"
S-Z2T1-RAISE,"SEQ-04 Tier 1 C-E: erect columns, girders, beams & temp bracing (C-E)",Steel,Z2T1,Erection,L2,C,E,1,4,2027-04-06,2027-04-14,7,S-Z1T1-RAISE,task,raise,"S1.21 L2 C-E: W24x192 cols, W36x160 (30) MF beams, W33x291 (110) CAM 3/4"" girder, HSS12x4x1/4 at ramp; D6R deck"
S-Z2T1-PLUMB,"SEQ-04 Tier 1 C-E: plumb, bolt-up & final torque (C-E)",Steel,Z2T1,Erection,L2,C,E,1,4,2027-04-13,2027-04-16,4,S-Z2T1-RAISE-2,task,,"S1.21 L2 C-E: W24x192 cols, W36x160 (30) MF beams, W33x291 (110) CAM 3/4"" girder, HSS12x4x1/4 at ramp; D6R deck"
S-Z2T1-WELD,SEQ-04 Tier 1 C-E: SidePlate moment connection weld-out & UT (C-E),Steel,Z2T1,Detailing,L2,C,E,1,4,2027-04-16,2027-04-23,6,S-Z2T1-PLUMB-1,task,,"S1.21 L2 C-E: W24x192 cols, W36x160 (30) MF beams, W33x291 (110) CAM 3/4"" girder, HSS12x4x1/4 at ramp; D6R deck"
S-Z2T1-DECK-L2,"SEQ-04 Tier 1 C-E: metal deck, pour stops, deck weld & shear studs @ L2 (C-E)",Steel,Z2T1,Decking,L2,C,E,1,4,2027-04-19,2027-04-21,3,S-Z2T1-PLUMB,task,deck,"S1.21 L2 C-E: W24x192 cols, W36x160 (30) MF beams, W33x291 (110) CAM 3/4"" girder, HSS12x4x1/4 at ramp; D6R deck"
S-Z2T1-REL-L2,MILESTONE: SEQ-04 Tier 1 C-E deck released to concrete @ L2 (C-E),Steel,Z2T1,Decking,L2,C,E,1,4,2027-04-26,2027-04-26,0,S-Z2T1-DECK-L2;S-Z2T1-WELD,milestone,release,"S1.21 L2 C-E: W24x192 cols, W36x160 (30) MF beams, W33x291 (110) CAM 3/4"" girder, HSS12x4x1/4 at ramp; D6R deck"
S-Z3T1-SHK,SEQ-05 Tier 1 E-G: shakeout & pre-assemble (E-G),Steel,Z3T1,Erection,L1,E,G,1,4,2027-04-13,2027-04-14,2,S-Z2T1-RAISE-2,task,shakeout,"S1.22 L2 E-G: W24x131 cols, W33x141 (40) MF at F-G, W18x35 (30) infill, W33x118 (80) & W30x99 (80) CAM 3/4"""
S-Z3T1-RAISE,"SEQ-05 Tier 1 E-G: erect columns, girders, beams & temp bracing (E-G)",Steel,Z3T1,Erection,L2,E,G,1,4,2027-04-15,2027-04-26,8,S-Z2T1-RAISE;S-Z3T0-REL-L1,task,raise,"S1.22 L2 E-G: W24x131 cols, W33x141 (40) MF at F-G, W18x35 (30) infill, W33x118 (80) & W30x99 (80) CAM 3/4"""
S-Z3T1-PLUMB,"SEQ-05 Tier 1 E-G: plumb, bolt-up & final torque (E-G)",Steel,Z3T1,Erection,L2,E,G,1,4,2027-04-23,2027-04-28,4,S-Z3T1-RAISE-2,task,,"S1.22 L2 E-G: W24x131 cols, W33x141 (40) MF at F-G, W18x35 (30) infill, W33x118 (80) & W30x99 (80) CAM 3/4"""
S-Z3T1-WELD,SEQ-05 Tier 1 E-G: SidePlate moment connection weld-out & UT (E-G),Steel,Z3T1,Detailing,L2,E,G,1,4,2027-04-28,2027-05-05,6,S-Z3T1-PLUMB-1,task,,"S1.22 L2 E-G: W24x131 cols, W33x141 (40) MF at F-G, W18x35 (30) infill, W33x118 (80) & W30x99 (80) CAM 3/4"""
S-Z3T1-DECK-L2,"SEQ-05 Tier 1 E-G: metal deck, pour stops, deck weld & shear studs @ L2 (E-G)",Steel,Z3T1,Decking,L2,E,G,1,4,2027-04-29,2027-05-03,3,S-Z3T1-PLUMB,task,deck,"S1.22 L2 E-G: W24x131 cols, W33x141 (40) MF at F-G, W18x35 (30) infill, W33x118 (80) & W30x99 (80) CAM 3/4"""
S-Z3T1-REL-L2,MILESTONE: SEQ-05 Tier 1 E-G deck released to concrete @ L2 (E-G),Steel,Z3T1,Decking,L2,E,G,1,4,2027-05-06,2027-05-06,0,S-Z3T1-DECK-L2;S-Z3T1-WELD,milestone,release,"S1.22 L2 E-G: W24x131 cols, W33x141 (40) MF at F-G, W18x35 (30) infill, W33x118 (80) & W30x99 (80) CAM 3/4"""
S-Z4T1-SHK,SEQ-06 Tier 1 G-J: shakeout & pre-assemble (G-J),Steel,Z4T1,Erection,L1,G,J,1,4,2027-04-23,2027-04-26,2,S-Z3T1-RAISE-2,task,shakeout,"S1.22 L2 G-J: W24x131 cols, W36x160 (17) MF segment, W24x55, HSS20x8x3/8; D6R deck"
S-Z4T1-RAISE,"SEQ-06 Tier 1 G-J: erect columns, girders, beams & temp bracing (G-J)",Steel,Z4T1,Erection,L2,G,J,1,4,2027-04-27,2027-05-06,8,S-Z3T1-RAISE;S-Z4T0-REL-L1,task,raise,"S1.22 L2 G-J: W24x131 cols, W36x160 (17) MF segment, W24x55, HSS20x8x3/8; D6R deck"
S-Z4T1-PLUMB,"SEQ-06 Tier 1 G-J: plumb, bolt-up & final torque (G-J)",Steel,Z4T1,Erection,L2,G,J,1,4,2027-05-05,2027-05-10,4,S-Z4T1-RAISE-2,task,,"S1.22 L2 G-J: W24x131 cols, W36x160 (17) MF segment, W24x55, HSS20x8x3/8; D6R deck"
S-Z4T1-WELD,SEQ-06 Tier 1 G-J: SidePlate moment connection weld-out & UT (G-J),Steel,Z4T1,Detailing,L2,G,J,1,4,2027-05-10,2027-05-17,6,S-Z4T1-PLUMB-1,task,,"S1.22 L2 G-J: W24x131 cols, W36x160 (17) MF segment, W24x55, HSS20x8x3/8; D6R deck"
S-Z4T1-DECK-L2,"SEQ-06 Tier 1 G-J: metal deck, pour stops, deck weld & shear studs @ L2 (G-J)",Steel,Z4T1,Decking,L2,G,J,1,4,2027-05-11,2027-05-13,3,S-Z4T1-PLUMB,task,deck,"S1.22 L2 G-J: W24x131 cols, W36x160 (17) MF segment, W24x55, HSS20x8x3/8; D6R deck"
S-Z4T1-REL-L2,MILESTONE: SEQ-06 Tier 1 G-J deck released to concrete @ L2 (G-J),Steel,Z4T1,Decking,L2,G,J,1,4,2027-05-18,2027-05-18,0,S-Z4T1-DECK-L2;S-Z4T1-WELD,milestone,release,"S1.22 L2 G-J: W24x131 cols, W36x160 (17) MF segment, W24x55, HSS20x8x3/8; D6R deck"
S011,Walk crane back to west end for tier 2 (column splices 4' above L2),Steel,GEN,General,L2,A,E,1,4,2027-05-07,2027-05-10,2,S-Z4T1-RAISE,task,,"S0.02 general notes: OSHA 1926.752 75% letter before erection, camber survey before pour, erector temp bracing per AISC 303 7.10"
S-Z1T2-SHK,SEQ-07 Tier 2 A-C: shakeout & pre-assemble (A-C),Steel,Z1T2,Erection,L1,A,C,1,4,2027-05-11,2027-05-12,2,S011;S-Z1T1-DECK-L2,task,shakeout,"S1.31 / S1.41 A-C: W24x104 upper-tier cols spliced above L2, W24x76 (30) MF beams L3, W24x68 (30) MF roof, W16x31 (30) roof infill, W24x104 girders, HSS8x8x3/8 posts"
S-Z1T2-RAISE,"SEQ-07 Tier 2 A-C: erect columns, girders, beams & temp bracing (A-C)",Steel,Z1T2,Erection,L3,A,C,1,4,2027-05-11,2027-05-20,8,S011;S-Z1T1-DECK-L2,task,raise,"S1.31 / S1.41 A-C: W24x104 upper-tier cols spliced above L2, W24x76 (30) MF beams L3, W24x68 (30) MF roof, W16x31 (30) roof infill, W24x104 girders, HSS8x8x3/8 posts"
S-Z1T2-PLUMB,"SEQ-07 Tier 2 A-C: plumb, bolt-up & final torque (A-C)",Steel,Z1T2,Erection,L3,A,C,1,4,2027-05-19,2027-05-24,4,S-Z1T2-RAISE-2,task,,"S1.31 / S1.41 A-C: W24x104 upper-tier cols spliced above L2, W24x76 (30) MF beams L3, W24x68 (30) MF roof, W16x31 (30) roof infill, W24x104 girders, HSS8x8x3/8 posts"
S-Z1T2-WELD,SEQ-07 Tier 2 A-C: SidePlate moment connection weld-out & UT (A-C),Steel,Z1T2,Detailing,L3,A,C,1,4,2027-05-24,2027-05-31,6,S-Z1T2-PLUMB-1,task,,"S1.31 / S1.41 A-C: W24x104 upper-tier cols spliced above L2, W24x76 (30) MF beams L3, W24x68 (30) MF roof, W16x31 (30) roof infill, W24x104 girders, HSS8x8x3/8 posts"
S-Z1T2-DECK-L3,"SEQ-07 Tier 2 A-C: metal deck, pour stops, deck weld & shear studs @ L3 (A-C)",Steel,Z1T2,Decking,L3,A,C,1,4,2027-05-25,2027-05-27,3,S-Z1T2-PLUMB,task,deck,"S1.31 / S1.41 A-C: W24x104 upper-tier cols spliced above L2, W24x76 (30) MF beams L3, W24x68 (30) MF roof, W16x31 (30) roof infill, W24x104 girders, HSS8x8x3/8 posts"
S-Z1T2-REL-L3,MILESTONE: SEQ-07 Tier 2 A-C deck released to concrete @ L3 (A-C),Steel,Z1T2,Decking,L3,A,C,1,4,2027-05-28,2027-05-28,0,S-Z1T2-DECK-L3,milestone,release,"S1.31 / S1.41 A-C: W24x104 upper-tier cols spliced above L2, W24x76 (30) MF beams L3, W24x68 (30) MF roof, W16x31 (30) roof infill, W24x104 girders, HSS8x8x3/8 posts"
S-Z1T2-DECK-RF,"SEQ-07 Tier 2 A-C: metal deck, pour stops, deck weld & shear studs @ RF (A-C)",Steel,Z1T2,Decking,RF,A,C,1,4,2027-05-28,2027-06-01,3,S-Z1T2-DECK-L3,task,deck,"S1.31 / S1.41 A-C: W24x104 upper-tier cols spliced above L2, W24x76 (30) MF beams L3, W24x68 (30) MF roof, W16x31 (30) roof infill, W24x104 girders, HSS8x8x3/8 posts"
S-Z1T2-REL-RF,MILESTONE: SEQ-07 Tier 2 A-C deck released to concrete @ RF (A-C),Steel,Z1T2,Decking,RF,A,C,1,4,2027-06-02,2027-06-02,0,S-Z1T2-DECK-RF;S-Z1T2-WELD,milestone,release,"S1.31 / S1.41 A-C: W24x104 upper-tier cols spliced above L2, W24x76 (30) MF beams L3, W24x68 (30) MF roof, W16x31 (30) roof infill, W24x104 girders, HSS8x8x3/8 posts"
S-Z2T2-SHK,SEQ-08 Tier 2 C-E: shakeout & pre-assemble (C-E),Steel,Z2T2,Erection,L1,C,E,1,4,2027-05-19,2027-05-20,2,S-Z1T2-RAISE-2,task,shakeout,"S1.31 / S1.41 C-E: W24x104 cols, W33x291 (110) CAM 3/4"" at L3, W24x76 MF L3, W24x68 MF roof, W27x84 (80) CAM 1"" roof"
S-Z2T2-RAISE,"SEQ-08 Tier 2 C-E: erect columns, girders, beams & temp bracing (C-E)",Steel,Z2T2,Erection,L3,C,E,1,4,2027-05-21,2027-06-01,8,S-Z1T2-RAISE;S-Z2T1-DECK-L2,task,raise,"S1.31 / S1.41 C-E: W24x104 cols, W33x291 (110) CAM 3/4"" at L3, W24x76 MF L3, W24x68 MF roof, W27x84 (80) CAM 1"" roof"
S-Z2T2-PLUMB,"SEQ-08 Tier 2 C-E: plumb, bolt-up & final torque (C-E)",Steel,Z2T2,Erection,L3,C,E,1,4,2027-05-31,2027-06-03,4,S-Z2T2-RAISE-2,task,,"S1.31 / S1.41 C-E: W24x104 cols, W33x291 (110) CAM 3/4"" at L3, W24x76 MF L3, W24x68 MF roof, W27x84 (80) CAM 1"" roof"
S-Z2T2-WELD,SEQ-08 Tier 2 C-E: SidePlate moment connection weld-out & UT (C-E),Steel,Z2T2,Detailing,L3,C,E,1,4,2027-06-03,2027-06-10,6,S-Z2T2-PLUMB-1,task,,"S1.31 / S1.41 C-E: W24x104 cols, W33x291 (110) CAM 3/4"" at L3, W24x76 MF L3, W24x68 MF roof, W27x84 (80) CAM 1"" roof"
S-Z2T2-DECK-L3,"SEQ-08 Tier 2 C-E: metal deck, pour stops, deck weld & shear studs @ L3 (C-E)",Steel,Z2T2,Decking,L3,C,E,1,4,2027-06-04,2027-06-08,3,S-Z2T2-PLUMB,task,deck,"S1.31 / S1.41 C-E: W24x104 cols, W33x291 (110) CAM 3/4"" at L3, W24x76 MF L3, W24x68 MF roof, W27x84 (80) CAM 1"" roof"
S-Z2T2-REL-L3,MILESTONE: SEQ-08 Tier 2 C-E deck released to concrete @ L3 (C-E),Steel,Z2T2,Decking,L3,C,E,1,4,2027-06-09,2027-06-09,0,S-Z2T2-DECK-L3,milestone,release,"S1.31 / S1.41 C-E: W24x104 cols, W33x291 (110) CAM 3/4"" at L3, W24x76 MF L3, W24x68 MF roof, W27x84 (80) CAM 1"" roof"
S-Z2T2-DECK-RF,"SEQ-08 Tier 2 C-E: metal deck, pour stops, deck weld & shear studs @ RF (C-E)",Steel,Z2T2,Decking,RF,C,E,1,4,2027-06-09,2027-06-11,3,S-Z2T2-DECK-L3,task,deck,"S1.31 / S1.41 C-E: W24x104 cols, W33x291 (110) CAM 3/4"" at L3, W24x76 MF L3, W24x68 MF roof, W27x84 (80) CAM 1"" roof"
S-Z2T2-REL-RF,MILESTONE: SEQ-08 Tier 2 C-E deck released to concrete @ RF (C-E),Steel,Z2T2,Decking,RF,C,E,1,4,2027-06-14,2027-06-14,0,S-Z2T2-DECK-RF;S-Z2T2-WELD,milestone,release,"S1.31 / S1.41 C-E: W24x104 cols, W33x291 (110) CAM 3/4"" at L3, W24x76 MF L3, W24x68 MF roof, W27x84 (80) CAM 1"" roof"
S-Z3T2-SHK,SEQ-09 Tier 2 E-G: shakeout & pre-assemble (E-G),Steel,Z3T2,Erection,L1,E,G,1,4,2027-05-31,2027-06-01,2,S-Z2T2-RAISE-2,task,shakeout,"S1.32 / S1.42 E-G: W24x104 cols, W24x76 (40) MF F-G, W36x160 (51) L3, W33x118 (110) CAM 2"" roof, W30x116 (30)"
S-Z3T2-RAISE,"SEQ-09 Tier 2 E-G: erect columns, girders, beams & temp bracing (E-G)",Steel,Z3T2,Erection,L3,E,G,1,4,2027-06-02,2027-06-14,9,S-Z2T2-RAISE;S-Z3T1-DECK-L2,task,raise,"S1.32 / S1.42 E-G: W24x104 cols, W24x76 (40) MF F-G, W36x160 (51) L3, W33x118 (110) CAM 2"" roof, W30x116 (30)"
S-Z3T2-PLUMB,"SEQ-09 Tier 2 E-G: plumb, bolt-up & final torque (E-G)",Steel,Z3T2,Erection,L3,E,G,1,4,2027-06-11,2027-06-16,4,S-Z3T2-RAISE-2,task,,"S1.32 / S1.42 E-G: W24x104 cols, W24x76 (40) MF F-G, W36x160 (51) L3, W33x118 (110) CAM 2"" roof, W30x116 (30)"
S-Z3T2-WELD,SEQ-09 Tier 2 E-G: SidePlate moment connection weld-out & UT (E-G),Steel,Z3T2,Detailing,L3,E,G,1,4,2027-06-16,2027-06-23,6,S-Z3T2-PLUMB-1,task,,"S1.32 / S1.42 E-G: W24x104 cols, W24x76 (40) MF F-G, W36x160 (51) L3, W33x118 (110) CAM 2"" roof, W30x116 (30)"
S-Z3T2-DECK-L3,"SEQ-09 Tier 2 E-G: metal deck, pour stops, deck weld & shear studs @ L3 (E-G)",Steel,Z3T2,Decking,L3,E,G,1,4,2027-06-17,2027-06-21,3,S-Z3T2-PLUMB,task,deck,"S1.32 / S1.42 E-G: W24x104 cols, W24x76 (40) MF F-G, W36x160 (51) L3, W33x118 (110) CAM 2"" roof, W30x116 (30)"
S-Z3T2-REL-L3,MILESTONE: SEQ-09 Tier 2 E-G deck released to concrete @ L3 (E-G),Steel,Z3T2,Decking,L3,E,G,1,4,2027-06-22,2027-06-22,0,S-Z3T2-DECK-L3,milestone,release,"S1.32 / S1.42 E-G: W24x104 cols, W24x76 (40) MF F-G, W36x160 (51) L3, W33x118 (110) CAM 2"" roof, W30x116 (30)"
S-Z3T2-DECK-RF,"SEQ-09 Tier 2 E-G: metal deck, pour stops, deck weld & shear studs @ RF (E-G)",Steel,Z3T2,Decking,RF,E,G,1,4,2027-06-22,2027-06-24,3,S-Z3T2-DECK-L3,task,deck,"S1.32 / S1.42 E-G: W24x104 cols, W24x76 (40) MF F-G, W36x160 (51) L3, W33x118 (110) CAM 2"" roof, W30x116 (30)"
S-Z3T2-REL-RF,MILESTONE: SEQ-09 Tier 2 E-G deck released to concrete @ RF (E-G),Steel,Z3T2,Decking,RF,E,G,1,4,2027-06-25,2027-06-25,0,S-Z3T2-DECK-RF;S-Z3T2-WELD,milestone,release,"S1.32 / S1.42 E-G: W24x104 cols, W24x76 (40) MF F-G, W36x160 (51) L3, W33x118 (110) CAM 2"" roof, W30x116 (30)"
S-Z4T2-SHK,SEQ-10 Tier 2 G-J: shakeout & pre-assemble (G-J),Steel,Z4T2,Erection,L1,G,J,1,4,2027-06-11,2027-06-14,2,S-Z3T2-RAISE-2,task,shakeout,"S1.32 / S1.42 G-J: W24x104 cols, W24x76 (17) MF, W8x10/W8x31 L3 infill, W24x68 (40) MF roof, W30x99 (40/42), HSS12x6x1/4"
S-Z4T2-RAISE,"SEQ-10 Tier 2 G-J: erect columns, girders, beams & temp bracing (G-J)",Steel,Z4T2,Erection,L3,G,J,1,4,2027-06-15,2027-06-25,9,S-Z3T2-RAISE;S-Z4T1-DECK-L2,task,raise,"S1.32 / S1.42 G-J: W24x104 cols, W24x76 (17) MF, W8x10/W8x31 L3 infill, W24x68 (40) MF roof, W30x99 (40/42), HSS12x6x1/4"
S-Z4T2-PLUMB,"SEQ-10 Tier 2 G-J: plumb, bolt-up & final torque (G-J)",Steel,Z4T2,Erection,L3,G,J,1,4,2027-06-24,2027-06-29,4,S-Z4T2-RAISE-2,task,,"S1.32 / S1.42 G-J: W24x104 cols, W24x76 (17) MF, W8x10/W8x31 L3 infill, W24x68 (40) MF roof, W30x99 (40/42), HSS12x6x1/4"
S-Z4T2-WELD,SEQ-10 Tier 2 G-J: SidePlate moment connection weld-out & UT (G-J),Steel,Z4T2,Detailing,L3,G,J,1,4,2027-06-29,2027-07-06,6,S-Z4T2-PLUMB-1,task,,"S1.32 / S1.42 G-J: W24x104 cols, W24x76 (17) MF, W8x10/W8x31 L3 infill, W24x68 (40) MF roof, W30x99 (40/42), HSS12x6x1/4"
S-Z4T2-DECK-L3,"SEQ-10 Tier 2 G-J: metal deck, pour stops, deck weld & shear studs @ L3 (G-J)",Steel,Z4T2,Decking,L3,G,J,1,4,2027-06-30,2027-07-02,3,S-Z4T2-PLUMB,task,deck,"S1.32 / S1.42 G-J: W24x104 cols, W24x76 (17) MF, W8x10/W8x31 L3 infill, W24x68 (40) MF roof, W30x99 (40/42), HSS12x6x1/4"
S-Z4T2-REL-L3,MILESTONE: SEQ-10 Tier 2 G-J deck released to concrete @ L3 (G-J),Steel,Z4T2,Decking,L3,G,J,1,4,2027-07-05,2027-07-05,0,S-Z4T2-DECK-L3,milestone,release,"S1.32 / S1.42 G-J: W24x104 cols, W24x76 (17) MF, W8x10/W8x31 L3 infill, W24x68 (40) MF roof, W30x99 (40/42), HSS12x6x1/4"
S-Z4T2-DECK-RF,"SEQ-10 Tier 2 G-J: metal deck, pour stops, deck weld & shear studs @ RF (G-J)",Steel,Z4T2,Decking,RF,G,J,1,4,2027-07-05,2027-07-07,3,S-Z4T2-DECK-L3,task,deck,"S1.32 / S1.42 G-J: W24x104 cols, W24x76 (17) MF, W8x10/W8x31 L3 infill, W24x68 (40) MF roof, W30x99 (40/42), HSS12x6x1/4"
S-Z4T2-REL-RF,MILESTONE: SEQ-10 Tier 2 G-J deck released to concrete @ RF (G-J),Steel,Z4T2,Decking,RF,G,J,1,4,2027-07-08,2027-07-08,0,S-Z4T2-DECK-RF;S-Z4T2-WELD,milestone,release,"S1.32 / S1.42 G-J: W24x104 cols, W24x76 (17) MF, W8x10/W8x31 L3 infill, W24x68 (40) MF roof, W30x99 (40/42), HSS12x6x1/4"
S020,Erect stairs 1 & 2 (A-B / 1-2),Steel,MISC,Miscellaneous,L1,A,B,1,2,2027-06-02,2027-06-04,3,S-Z1T2-DECK-RF,task,,"S4.01 / S4.02 stair plans C12x30 stringers, HSS6x6 posts; entry canopy S4.02 C1 W14x22 on HSS8x8 posts, HSS20x8x3/8"
S021,Erect stairs 3 & 4 (G-H / 3-4),Steel,MISC,Miscellaneous,L1,G,H,3,4,2027-07-08,2027-07-12,3,S-Z4T2-DECK-RF,task,,"S4.01 / S4.02 stair plans C12x30 stringers, HSS6x6 posts; entry canopy S4.02 C1 W14x22 on HSS8x8 posts, HSS20x8x3/8"
S022,Erect entry canopy framing (B-D / grid 1),Steel,MISC,Miscellaneous,L1,B,D,1,1,2027-06-07,2027-06-08,2,S020,task,,"S4.01 / S4.02 stair plans C12x30 stringers, HSS6x6 posts; entry canopy S4.02 C1 W14x22 on HSS8x8 posts, HSS20x8x3/8"
S023,"Roof screen / penthouse dunnage, HSS braced frame infill",Steel,MISC,Miscellaneous,RF,G,J,1,4,2027-07-08,2027-07-13,4,S-Z4T2-DECK-RF,task,,"S4.01 / S4.02 stair plans C12x30 stringers, HSS6x6 posts; entry canopy S4.02 C1 W14x22 on HSS8x8 posts, HSS20x8x3/8"
S024,Final plumb survey & EOR structural observation,Steel,MISC,Miscellaneous,RF,A,J,1,4,2027-07-07,2027-07-08,2,S-Z4T2-WELD,task,,"S4.01 / S4.02 stair plans C12x30 stringers, HSS6x6 posts; entry canopy S4.02 C1 W14x22 on HSS8x8 posts, HSS20x8x3/8"
S025,"Crane demob, remove temp bracing, punch & turnover",Steel,GEN,General,RF,A,J,1,4,2027-07-14,2027-07-16,3,S023;S024,task,,"S0.02 general notes: OSHA 1926.752 75% letter before erection, camber survey before pour, erector temp bracing per AISC 303 7.10"
S-SUBSTANTIAL,MILESTONE: Structural steel substantially complete,Steel,GEN,General,RF,A,J,1,4,2027-07-19,2027-07-19,0,S025,milestone,,"S0.02 general notes: OSHA 1926.752 75% letter before erection, camber survey before pour, erector temp bracing per AISC 303 7.10"
